# План-график АИС Налог-4 арх-ра, ЕТП_06.06.25

Schedule from MS Project, 2025-01-15 to 2027-08-03, A marks actual dates.

## Calendars

- Стандартный: Mon-Fri 09:00-13:00, 14:00-18:00; Sat-Sun off. Exceptions (off unless hours are given): 2026-05-01 (1ое мая), 2026-05-11 (9ое мая), 2026-06-12 (12ое июня), 2026-11-04 (4 ноября), 2026-12-31 to 2027-01-10 (31ое декабря), 2027-02-22 to 2027-02-23 (22 февраля), 2027-03-08 (8е марта), 2027-05-03 (3е мая), 2027-05-10 (10е мая).

## Resources

| Resource |
| --- |
| ГНИВЦ |
| ФКУ |
| УИТ |
| УИБ |
| Рубитех |
| ГНИЦВ, ФКУ |
| НОЦ |
| UY |
| УРУН |
| УРУН, ГНИВЦ |
| ГНИВЦ, ФКУ |
| ГНИВЦ, УИБ |
| ГНИВЦ Команда прикладной системы |
| ГНИВЦ Команда ИИ |
| ГНИВЦ УИТИ |
| ГНИВЦ TFS |
| ГНИВЦ Команда ИИ и команда прикладной системы |
| Ф |

## Schedule

| ID | WBS | Task | Duration | Start | Finish | Predecessors | Complete | Remaining | Baseline start | Baseline finish | Baseline duration | Total slack | Free slack | Constraint | Resources | Work | Actual work |
| --- | --- | --- | --- | --- | --- | --- | --- | --- | --- | --- | --- | --- | --- | --- | --- | --- | --- |
| 1 | 1 | Запуск ППО ЦСР ФИАС на КОЭ и КПЭ | 100d? | 2025-01-15 | 2025-06-03 |  |  |  | 2025-03-26 | 2026-05-26 | 299d | 549d | 0d |  |  |  |  |
| 2 | 2 | **Подготовительные работы в части разработки/доработки LLM моделей и ППО ЦСР ФИАС** | 109d | 2026-06-22 A | 2026-11-20 |  | 6% | 102.16d |  |  |  | 170d | 0d |  |  | 1816h | 112h |
| 3 | 2.1 | Разработать промпты на критерии и тестового датасета | 51d | 2026-06-22 A | 2026-08-31 |  | 10% | 46d |  |  |  | 0d |  | start no earlier than 2026-06-22 | ГНИВЦ Команда прикладной системы | 408h | 40h |
| 4 | 2.2 | Разработать редактируемый справочник критериев для совместного заполнения инспекциями и ГНИВЦ (критерий, промпт, условия применимости, набор тестовых документов положит. И отриц.) | 46d | 2026-06-29 A | 2026-08-31 | 3 | 11% | 41d |  |  |  | 0d |  | finish no earlier than 2026-08-31 | ГНИВЦ Команда прикладной системы | 368h | 40h |
| 5 | 2.3 | Разработать механизм исполнения сценариев включая тестовое исполнение с оценкой качества ответов | 41d | 2026-07-06 A | 2026-08-31 | 4 | 10% | 37d |  |  |  | 0d |  | finish no earlier than 2026-08-31 | ГНИВЦ Команда ИИ | 328h | 32h |
| 6 | 2.4 | Провести тестирование моделей, выбор моделей | 5d | 2026-09-01 | 2026-09-07 | 5 |  |  |  |  |  | 0d |  |  | ГНИВЦ Команда ИИ | 40h |  |
| 7 | 2.5 | Настроить интеграцию с OCR для обеспечения распознования документов | 5d | 2026-09-08 | 2026-09-14 | 6 |  |  |  |  |  | 0d |  |  | ГНИВЦ Команда прикладной системы | 40h |  |
| 8 | 2.6 | Доработать ЦСР/ФИАС | 25d | 2026-09-15 | 2026-10-19 | 7 |  |  |  |  |  | 0d |  |  | ГНИВЦ Команда прикладной системы | 200h |  |
| 9 | 2.7 | Сформировать отчеты по проверкам для ИИ моделей | 7d | 2026-09-08 | 2026-09-16 | 6 |  |  |  |  |  | 27d | 0d |  | ГНИВЦ Команда ИИ | 56h |  |
| 10 | 2.8 | Провести тестирование на ADP ГНИВЦ решения ЦСР ФИАС и моделей LLM | 5d | 2026-10-20 | 2026-10-26 | 8 |  |  |  |  |  | 0d |  |  | ГНИВЦ Команда ИИ | 40h |  |
| 11 | 2.9 | Доработки по итогам тестирования | 7d | 2026-10-27 | 2026-11-05 | 10 |  |  |  |  |  | 181d | 0d |  | ГНИВЦ Команда ИИ | 56h |  |
| 12 | 2.10 | Подготовить инструкцию по установке и настройке LLM моделей и решения на сервер с GPU | 7d | 2026-10-27 | 2026-11-05 | 10 |  |  |  |  |  | 0d |  |  | ГНИВЦ | 56h |  |
| 13 | 2.11 | Записать LLM решения на диск | 3d | 2026-09-17 | 2026-09-21 | 9 |  |  |  |  |  | 27d | 0d | start no earlier than 2026-08-11 | ГНИВЦ Команда ИИ | 24h |  |
| 14 | 2.12 | Подготовить и отправить письмо "О согласовании установки LLM моделей с диска" в УИБ (копия УИТ/ФКУ) с приложением отчета | 1d | 2026-09-22 | 2026-09-22 | 13 |  |  |  |  |  | 27d | 0d |  | ГНИВЦ | 8h |  |
| 15 | 2.13 | Получить ответ на письмо от УИБ "О согласовании установки LLM моделей с диска" | 5d | 2026-09-23 | 2026-09-29 | 14 |  |  |  |  |  | 27d | 0d |  | УИБ | 40h |  |
| 16 | 2.14 | Передать диск с LLM моделями и решением на проверку ИБ ФКУ с приложением акта приема-передачи | 1d | 2026-09-30 | 2026-09-30 | 15 |  |  |  |  |  | 27d | 0d |  | ГНИВЦ Команда ИИ | 8h |  |
| 17 | 2.15 | Провести проверку диска ИБ ФКУ | 3d | 2026-10-01 | 2026-10-05 | 16 |  |  |  |  |  | 27d | 0d |  | ФКУ | 24h |  |
| 18 | 2.16 | Согласовать инструкцию с ФКУ по заявке в TFS (заявка по МПИД) | 5d | 2026-11-06 | 2026-11-12 | 12 |  |  |  |  |  | 0d |  |  | ГНИВЦ, ФКУ; ГНИВЦ УИТИ | 80h |  |
| 19 | 2.17 | Подготовить документы для передачи ППО ЦСР ФИАС в ФАП | 3d | 2026-11-13 | 2026-11-17 | 12, 13, 15, 16, 17, 18 |  |  |  |  |  | 0d |  |  | ГНИВЦ | 24h |  |
| 20 | 2.18 | Передать ППО ЦСР ФИАС в ФАП | 2d | 2026-11-18 | 2026-11-19 | 19 |  |  |  |  |  | 0d |  |  | ГНИВЦ | 16h |  |
| 21 | 2.19 | Готовность установки ЦСР ФИАС на КОЭ | 1d | 2026-11-20 | 2026-11-20 | 20 |  |  |  |  |  | 0d |  |  |  |  |  |
| 22 | 3 | **Разработка и согласование МПИД и установка LLM моделей и ППО ЦСР ФИАС на КОЭ** | 141d? | 2026-06-22 | 2027-01-14 |  |  |  |  |  |  | 56d | 0d |  |  | 1864h |  |
| 23 | 3.1 | Перевоз сервера с GPU на Походный с сопутствующими организационными мероприятиями | 26d? | 2026-07-13 | 2026-08-17 |  |  |  |  |  |  | 238d | 0d | start no earlier than 2026-07-13 | ГНИВЦ УИТИ | 208h |  |
| 24 | 3.2 | Разработка и согласование L2 | 26d | 2026-07-13 | 2026-08-17 |  |  |  |  |  |  | 56d | 0d | start no earlier than 2026-07-13 | ГНИВЦ УИТИ | 208h |  |
| 25 | 3.3 | Коммутация по L2 | 5d | 2026-08-18 | 2026-08-24 | 24 |  |  |  |  |  | 56d | 0d |  | ФКУ | 40h |  |
| 26 | 3.4 | Инициировать проект в TFS и согласовать его с ФКУ | 5d | 2026-06-22 | 2026-06-26 |  |  |  |  |  |  | 56d | 0d | start no earlier than 2026-06-22 | ГНИВЦ, ФКУ; ГНИВЦ УИТИ | 80h |  |
| 27 | 3.5 | Актуализировать требованя к ИТ инфраструктуре и согласовать в РСИС | 7d | 2026-06-22 | 2026-06-30 | 26SS |  |  |  |  |  | 56d | 0d |  | ГНИВЦ УИТИ | 56h |  |
| 28 | 3.6 | Отправить письмо в УИТ для согласования выделения дополнительных серверов | 1d | 2026-07-01 | 2026-07-01 | 27 |  |  |  |  |  | 261d | 0d |  | ГНИВЦ | 8h |  |
| 29 | 3.7 | Получить ответ от ФКУ о подтверждении наличия оборудования | 5d | 2026-07-02 | 2026-07-08 | 28 |  |  |  |  |  | 261d | 0d |  | ФКУ | 40h |  |
| 30 | 3.8 | Получить ответ от УИТ о согласовании выделения оборудования | 5d | 2026-07-09 | 2026-07-15 | 29 |  |  |  |  |  | 261d | 0d |  | УИТ | 40h |  |
| 31 | 3.9 | Подготовить МПИД (пояснительную записку, матрицу сетевого взаимодействия, схему развертывания ЦСР ФИАС (с GPU)) | 20d | 2026-07-01 | 2026-07-28 | 27 |  |  |  |  |  | 56d | 0d |  | ГНИВЦ УИТИ | 160h |  |
| 32 | 3.10 | Согласовать с ФКУ в tfs по заявке (ПЗ, схемы, матрицы сетевого взаимодействия (использование GPU СКУАД), профиль трафика) | 20d | 2026-07-20 | 2026-08-14 | 31FS-7d |  |  |  |  |  | 56d | 0d | finish no earlier than 2026-08-14 | ГНИВЦ, ФКУ; ГНИВЦ УИТИ | 320h |  |
| 33 | 3.11 | Направить письмо в УИТ (УИБ, ФКУ) об утверждении комплекта документации (ПЗ, схемы, матрицы сетевого взаимодействия (использование GPU СКУАД), профиль трафика) | 1d | 2026-08-17 | 2026-08-17 | 32 |  |  |  |  |  | 56d | 0d |  | ГНИВЦ УИТИ | 8h |  |
| 34 | 3.12 | Получить ответ от УИТ об утверждении комплекта документации (ПЗ, схемы, матрицы сетевого взаимодействия (использование GPU СКУАД), профиль трафика) | 5d | 2026-08-18 | 2026-08-24 | 33 |  |  |  |  |  | 56d | 0d |  | УИТ | 40h |  |
| 35 | 3.13 | Сформировать заявку на создание VLAN для ЦСР ФИАС | 1d | 2026-08-17 | 2026-08-17 | 33FF |  |  |  |  |  | 61d | 0d |  | ГНИВЦ | 8h |  |
| 36 | 3.14 | Создать VLAN в rDMZ Москва | 3d | 2026-08-25 | 2026-08-27 | 34, 35, 25 |  |  |  |  |  | 56d | 0d |  | ФКУ | 24h |  |
| 37 | 3.15 | Сформировать заявку на создание СВ для LLM по МПИД | 1d | 2026-08-17 | 2026-08-17 | 33FF |  |  |  |  |  | 64d | 0d |  | ГНИВЦ УИТИ | 8h |  |
| 38 | 3.16 | Создать СВ для LLM по заявке в TFS | 5d | 2026-08-28 | 2026-09-03 | 36, 37 |  |  |  |  |  | 56d | 0d |  | ФКУ | 40h |  |
| 39 | 3.17 | Сформировать заявку на установку (обновление) ЦСР ФИАС | 1d | 2026-11-23 | 2026-11-23 | 21 |  |  |  |  |  | 0d |  |  | ГНИВЦ Команда прикладной системы | 8h |  |
| 40 | 3.18 | Установить (обновление) ЦСР ФИАС по заявке TFS | 15d | 2026-11-24 | 2026-12-14 | 39, 38 |  |  |  |  |  | 0d |  |  | ФКУ | 120h |  |
| 41 | 3.19 | Установить LLM моделей и решения по инструкции силами ГНИВЦ (в т.ч. Командировка сотрудника ГНИВЦ) (централизовано со СКУАД) | 14d | 2026-11-23 | 2026-12-10 | 17, 21 |  |  |  |  |  | 2d | 0d |  | ГНИВЦ Команда ИИ | 112h |  |
| 42 | 3.20 | Провести тестирование решения с LLM силами ГНИВЦ | 5d | 2026-12-15 | 2026-12-21 | 40, 41 |  |  |  |  |  | 0d |  |  | ГНИВЦ Команда ИИ и команда прикладной системы | 40h |  |
| 43 | 3.21 | Корректировки по итогам тестирования | 10d | 2026-12-22 | 2027-01-13 | 42 |  |  |  |  |  | 0d |  |  | ГНИВЦ Команда ИИ и команда прикладной системы | 80h |  |
| 44 | 3.22 | Провести демонстрацию заказчику на КОЭ | 1d | 2027-01-14 | 2027-01-14 | 42, 43 |  |  |  |  |  | 0d |  |  | ГНИВЦ Команда ИИ и команда прикладной системы | 8h |  |
| 45 | 3.23 | Согласование с УИБ и перенос промышленных данных на КОЭ для реализации КПЭ | 20d | 2026-11-02 | 2026-11-30 |  |  |  |  |  |  | 158d | 0d | start no earlier than 2026-11-02 | ГНИВЦ Команда ИИ и команда прикладной системы | 160h |  |
| 46 | 3.24 | Тестирование на промышленных данных силами ГНИВЦ | 5d | 2026-12-01 | 2026-12-07 | 45 |  |  |  |  |  | 158d | 0d |  | ГНИВЦ Команда ИИ и команда прикладной системы | 40h |  |
| 47 | 3.25 | Провести демонстрацию заказчику на КОЭ с промышленными данными для реализации КПЭ | 1d | 2026-12-08 | 2026-12-08 | 46 |  |  |  |  |  | 158d | 0d |  | ГНИВЦ Команда ИИ и команда прикладной системы | 8h |  |

Notes:
- 7: Есть риски из-за неокончательного выбора OCR решения / Text3: Провайдер еще неизвестен
- 8: Text3: Часть реализации решения с LLM (состояние очереди, чинкование ? - обсудить с Бачуриным - непонятен процесс обработки больших документов, шедуллер) будет поставляться отдельно, надо уточнить у Федорова М.
- 22: Text3: Схема сетевого взаимодействия (схема логической структуры)
- 26: Text3: Уточнить у Дениса (ФКУ), нужно ли будет дублировать письма по доступу к серверу по новому проекту
- 32: Есть необходимость увеличить количество серверов для использования мощностей для 2х проектов: СКУАД и ЕГРЮЛ; вероятно будет использовано арендованный сервер
- 35: Text3: Уточнить у Бачурина необходимые работы и заявки по разворачиванию приклада на выделенных серверах. Ответ: имелось в виду про LLM? у ЦСР ФИАС уже есть VLAN
- 36: Text3: Уточнить у Бачурина и арх. Инфры нужен ли новый vlan для llm решения, или мы используем текущий vlan для ЦСР
- 40: Text3: Уточнить, нужны ли виртуальные машины или сервера (у Бачурина), срок тоже. Ответ: ВМ не нужно разворачивать, все есть.

| ID | WBS | Task | Duration | Start | Finish | Predecessors | Total slack | Free slack | Constraint | Resources | Work |
| --- | --- | --- | --- | --- | --- | --- | --- | --- | --- | --- | --- |
| 48 | 4 | **Подготовительные работы** | 264d? | 2026-07-13 | 2027-08-03 |  | 0d |  |  |  | 4392h |
| 49 | 4.1 | Поставка оборудования для КПЭ | 1d? | 2026-12-30 | 2026-12-31 |  | 4d | 0d | finish no earlier than 2026-12-31 |  |  |
| 50 | 4.2 | Доработать LLM модели и ППО ЦСР ФИАС после проведения демонстрации заказчику на КОЭ | 15d | 2027-01-15 | 2027-02-04 | 44 | 0d |  |  | ГНИВЦ Команда ИИ | 120h |
| 51 | 4.3 | Доработать инструкции по развертыванию LLM моделей и документации ППО ЦСР ФИАС | 10d | 2027-02-05 | 2027-02-18 | 50 | 98d | 0d |  | ГНИВЦ Команда ИИ | 80h |
| 52 | 4.4 | Согласование проноса диска с LLM моделями на КПЭ | 80d? | 2026-07-13 | 2026-10-30 |  | 166d | 0d | start no earlier than 2026-07-13 | УИБ; ФКУ; ГНИВЦ | 1920h |
| 53 | 4.5 | Согласовать инструкции по развертыванию LLM моделей с ФКУ | 15d | 2027-02-19 | 2027-03-16 | 51 | 98d | 0d |  | ГНИВЦ, ФКУ; ГНИВЦ Команда ИИ | 240h |
| 54 | 4.6 | Сформировать отчеты по проверкам для ИИ моделей | 10d | 2027-02-05 | 2027-02-18 | 41, 50 | 92d | 0d | start no earlier than 2026-11-09 | ГНИВЦ Команда ИИ | 80h |
| 55 | 4.7 | Записать LLM модели на диск | 3d | 2027-02-19 | 2027-02-25 | 54 | 92d | 0d |  | ГНИВЦ Команда ИИ | 24h |
| 56 | 4.8 | Подготовить и отправить письмо "О согласовании установки LLM моделей с диска" в УИБ (копия УИТ/ФКУ) с приложением отчета | 1d | 2027-02-26 | 2027-02-26 | 52, 55 | 92d | 0d |  | ГНИВЦ | 8h |
| 57 | 4.9 | Получить ответ на письмо от УИБ "О согласовании установки LLM моделей с диска" | 5d | 2027-03-01 | 2027-03-05 | 56 | 92d | 0d |  | ГНИВЦ, УИБ | 40h |
| 58 | 4.10 | Передать диск с LLM моделями на проверку ИБ ФКУ с приложением акта приема-передачи | 1d | 2027-03-09 | 2027-03-09 | 57 | 92d | 0d |  | ГНИВЦ Команда ИИ | 8h |
| 59 | 4.11 | Провести проверку диска ИБ ФКУ | 3d | 2027-03-10 | 2027-03-12 | 58, 52 | 92d | 0d |  | ФКУ | 24h |
| 60 | 4.12 | Принять решение о способе доступа к диску для настройки LLM моделей | 15d | 2027-01-15 | 2027-02-04 | 50SS, 49 | 0d |  |  | ГНИВЦ Команда ИИ | 120h |
| 61 | 4.13 | Отправить письмо о согласовании трансфера | 2d | 2027-02-05 | 2027-02-08 | 60, 49 | 0d |  |  | ГНИВЦ УИТИ | 16h |
| 62 | 4.14 | Трансфер GPU-сервера из Городца в Дубну | 12d | 2027-02-09 | 2027-02-26 | 61, 49 | 0d |  |  | ГНИВЦ УИТИ | 96h |
| 63 | 4.15 | Подготовить документы для передачи ППО ЦСР ФИАС в ФАП | 5d | 2027-03-15 | 2027-03-19 | 59 | 92d | 0d |  | ГНИВЦ Команда прикладной системы | 40h |
| 64 | 4.16 | Передать ППО ЦСР ФИАС в ФАП | 2d | 2027-03-22 | 2027-03-23 | 63 | 92d | 0d |  | ГНИВЦ Команда прикладной системы | 16h |
| 65 | 4.17 | Сервера GPU поставлены на КПЭ | 1d | 2027-03-24 | 2027-03-24 | 64, 60, 62 | 92d | 0d |  |  |  |
| 66 | 4.18 | Сформировать схему L2 | 10d | 2027-03-01 | 2027-03-15 | 62 | 0d |  |  | ГНИВЦ УИТИ | 80h |
| 67 | 4.19 | Согласовать схему L2 в рабочем порядке с ФКУ в Lotus | 15d | 2027-03-16 | 2027-04-05 | 66 | 84d | 0d |  | ФКУ | 120h |
| 68 | 4.20 | Сформировать требования к серверу и разместить в РСИС на согласование на сервер с GPU | 7d | 2027-03-16 | 2027-03-24 | 66 | 0d |  |  | ГНИВЦ УИТИ | 56h |
| 69 | 4.21 | Согласовать требования к серверу GPU в РСИС | 15d | 2027-03-25 | 2027-04-14 | 68 | 61d | 0d |  | ФКУ | 120h |
| 70 | 4.22 | Направить в УИТ (копия УИБ, ФКУ) о согласовании схемы L2+ требование в РСИС | 1d | 2027-04-15 | 2027-04-15 | 69 | 61d | 0d |  | ГНИВЦ УИТИ | 8h |
| 71 | 4.23 | Получить ответ от УИТ о согласовании коммутации серверов + выделения серверов по требованию в РСИС | 5d | 2027-04-16 | 2027-04-22 | 70 | 61d | 0d | start no earlier than 2027-02-15 |  |  |
| 72 | 4.24 | Провести выделение и коммутацию серверов | 10d | 2027-04-23 | 2027-05-07 | 71 | 61d | 0d | start no earlier than 2026-12-07 | ФКУ | 80h |

Notes:
- 55: Text3: Уточнить вопрос с проносом диска на пром. Также уточнить, в случае согласования проноса, куда и как его будут передавать (на уровне руководства)
- 59: Риск согласования проноса, если нам не согласуют строчку 52 не понятно, как поедем на КПЭ. Единственная тема с загрузкой это ФАБ, а ФАБ не тянет такое количество ТБ. При такой нагрузке встанет вся плановая загрузка
- 60: Text3: Либо физический перевоз, либо монтирование на КОЭ и создание СВ - уточнить у Федорова
- 61: Text3: Запросить примеры у Ани
- 62: Text3: По информации от Федорова М. - все 22 сервера едут в Дубну
- 65: Text3: Размещение серверов (площадка) на уточнении. Ответ: уточнили, Дубна (ФИАС), ЦСР (Городец, Дубна)

| ID | WBS | Task | Duration | Start | Finish | Predecessors | Total slack | Free slack | Constraint | Resources | Work |
| --- | --- | --- | --- | --- | --- | --- | --- | --- | --- | --- | --- |
| 73 | 4.25 | **Разработка и согласование МПИД и установка LLM моделей и ППО ЦСР ФИАС на КПЭ** | 165d | 2026-11-30 | 2027-08-03 |  | 0d |  |  |  | 1096h |
| 74 | 4.25.1 | Инициировать проект в TFS и согласование с ФКУ | 5d | 2027-01-11 | 2027-01-15 | 49 | 137d | 0d | start no earlier than 2026-06-22 | ГНИВЦ, ФКУ; ГНИВЦ УИТИ | 80h |
| 75 | 4.25.2 | Подготовить МПИД (пояснительная записка, матрица сетевого взаимодействия, схема развертывания ЦСР ФИАС (с GPU), L3) | 20d | 2027-03-25 | 2027-04-21 | 68 | 0d |  |  | ГНИВЦ УИТИ | 160h |
| 76 | 4.25.3 | Согласование с ФКУ в tfs по заявке ПЗ, схемы, матрицы сетевого взаимодействия (использование GPU СКУАД), профиль трафика, L3) | 25d | 2027-04-13 | 2027-05-19 | 75FS-7d | 0d |  |  | ГНИВЦ, ФКУ; ГНИВЦ УИТИ | 400h |
| 77 | 4.25.4 | Направить письмо в УИТ (УИБ, ФКУ) об утверждении комплекта документации (ПЗ, схемы, матрицы сетевого взаимодействия (использование GPU СКУАД), профиль трафика, L3) | 1d | 2027-05-20 | 2027-05-20 | 76 | 0d |  |  | ГНИВЦ УИТИ | 8h |
| 78 | 4.25.5 | Получить ответное письмо УИТ об утверждении комплекта документации (ПЗ, схемы, матрицы сетевого взаимодействия (использование GPU СКУАД), профиль трафика, L3) | 5d | 2027-05-21 | 2027-05-27 | 77 | 0d |  |  | УИТ | 40h |
| 79 | 4.25.6 | Сформировать заявку на создание VLAN для ЦСР ФИАС / сервера с GPU | 1d | 2027-05-20 | 2027-05-20 | 77FF | 5d | 0d |  | ГНИВЦ | 8h |
| 80 | 4.25.7 | Создать VLAN в rDMZ Дубна | 5d | 2027-05-28 | 2027-06-03 | 78, 79 | 0d |  |  | ФКУ | 40h |
| 81 | 4.25.8 | Сформировать заявку на создание СВ по МПИД | 1d | 2027-05-20 | 2027-05-20 | 77FF | 10d | 0d |  | ГНИВЦ УИТИ | 8h |
| 82 | 4.25.9 | Создать СВ по заявке в TFS | 7d | 2027-06-04 | 2027-06-14 | 80, 81 | 0d |  |  | ФКУ | 56h |
| 83 | 4.25.10 | Сформировать заявку на установку ЦСР ФИАС | 1d | 2026-11-30 | 2026-11-30 |  | 128d | 0d | start no earlier than 2026-11-30 | ГНИВЦ Команда прикладной системы | 8h |
| 84 | 4.25.11 | Установить ЦСР ФИАС по заявке TFS | 15d | 2027-06-15 | 2027-07-05 | 82, 83 | 0d |  |  | ФКУ | 120h |
| 85 | 4.25.12 | Установить LLM моделей по инструкции | 15d | 2026-12-10 | 2026-12-30 |  | 121d | 0d | start no earlier than 2026-12-10 | ФКУ | 120h |
| 86 | 4.25.13 | Провести тестирование силами ГНИВЦ/ФКУ | 5d | 2027-07-06 | 2027-07-12 | 84, 85 | 0d |  |  | ГНИВЦ Команда ИИ и команда прикладной системы | 40h |
| 87 | 4.25.14 | Корректировки по итогам тестирования | 15d | 2027-07-13 | 2027-08-02 | 86 | 0d |  |  |  |  |
| 88 | 4.25.15 | Провести демонстрацию заказчику на КОЭ | 1d | 2027-08-03 | 2027-08-03 | 87 | 0d |  |  | ГНИВЦ Команда ИИ и команда прикладной системы | 8h |

Notes:
- 73: Text3: Уточнить у Бачурина комплект документов - МПИД, РА, схемы L2, L3 - нужно ли что-то еще? Ответ: у Миши информации нет, нужно уточнить у инфраструктурщиков
- 79: Text3: Уточнить у Бачурина необходимые работы и заявки по разворачиванию приклада на выделенных серверах. Ответ: ЦСР ФИАС все есть, нужно для LLM части. Уточнить у Бачурина и арх. Инфры нужен ли новый vlan для llm решения, или мы используем текущий vlan для ЦСР
- 84: Text3: Уточнить, нужны ли виртуальные машины или сервера (у Бачурина), срок тоже. Ответ: для ЦСР ФИАС ВМ не нужны (все есть), для LLM - нужны. Уточнить у Кирилла Д. нужны ли ВМ для LLM - Ответ: ВМ - нет, сервера нужны для сервиса приоритизации
- 85: Text3: 2 машины под Кубер, 2 - Kafka, 2 - PG (Postgress)
