# План-график АИС Налог-4 арх-ра, ЕТП_06.06.25

Schedule from MS Project, 2026-06-22 to 2027-07-28, A marks actual dates.

## Calendars

- Стандартный: Mon-Fri 09:00-13:00, 14:00-18:00; Sat-Sun off. Exceptions (off unless hours are given): 2026-11-04 (4 ноября), 2026-12-31 to 2027-01-10 (31ое декабря), 2027-02-22 to 2027-02-23 (22 февраля), 2027-03-08 (8е марта), 2027-05-03 (3е мая), 2027-05-10 (10е мая).

## Resources

| Resource |
| --- |
| ГНИВЦ |
| ФКУ |
| УИТ |
| УИБ |
| Рубитех |
| ГНИЦВ, ФКУ |
| НОЦ |
| UY |
| УРУН |
| УРУН, ГНИВЦ |
| ГНИВЦ, ФКУ |
| ГНИВЦ, УИБ |
| ГНИВЦ Команда прикладной системы |
| ГНИВЦ Команда ИИ |
| ГНИВЦ УИТИ |
| ГНИВЦ TFS |
| ГНИВЦ Команда ИИ и команда прикладной системы |
| Ф |

## Schedule

| ID | WBS | Task | Duration | Start | Finish | Predecessors | Complete | Remaining | Baseline start | Baseline finish | Baseline duration | Total slack | Free slack | Constraint | Resources | Work | Actual work |
| --- | --- | --- | --- | --- | --- | --- | --- | --- | --- | --- | --- | --- | --- | --- | --- | --- | --- |
| 1 | 1 | Запуск ППО ЦСР ФИАС на КОЭ и КПЭ | 275d | 2026-06-22 | 2027-07-28 |  |  |  | 2025-03-26 | 2026-05-26 | 299d | 0d |  | start no earlier than 2026-06-22 |  |  |  |
| 2 | 2 | **Подготовительные работы в части разработки/доработки LLM моделей и ППО ЦСР ФИАС** | 108d | 2026-06-22 A | 2026-11-19 |  | 10% | 97.04d |  |  |  | 167d | 0d |  |  | 1136h | 111.12h |
| 3 | 2.1 | Разработать промпты на критерии и тестового датасета | 31d | 2026-06-22 A | 2026-08-03 |  | 16% | 26d |  |  |  | 0d |  | start no earlier than 2026-06-22 | ГНИВЦ Команда прикладной системы | 248h | 39.68h |
| 4 | 2.2 | Разработать редактируемый справочник критериев для совместного заполнения инспекциями и ГНИВЦ (критерий, промпт, условия применимости, набор тестовых документов положит. И отриц.) | 26d | 2026-06-29 A | 2026-09-01 | 3 | 19% | 21d |  |  |  | 0d |  | finish no earlier than 2026-08-31 | ГНИВЦ Команда прикладной системы | 208h | 39.52h |
| 5 | 2.3 | Разработать механизм исполнения сценариев включая тестовое исполнение с оценкой качества ответов | 21d | 2026-07-06 A | 2026-09-24 | 4 | 19% | 17d |  |  |  | 78d | 0d | finish no earlier than 2026-08-31 | ГНИВЦ Команда ИИ | 168h | 31.92h |
| 6 | 2.4 | Провести тестирование моделей, выбор моделей | 5d | 2026-09-25 | 2026-10-01 | 5 |  |  |  |  |  | 78d | 0d |  | ГНИВЦ Команда ИИ | 40h |  |
| 7 | 2.5 | Настроить интеграцию с OCR для обеспечения распознования документов | 5d | 2026-10-02 | 2026-10-08 | 6 |  |  |  |  |  | 78d | 0d |  | ГНИВЦ Команда прикладной системы | 40h |  |
| 8 | 2.6 | Доработать ЦСР/ФИАС | 10d | 2026-10-09 | 2026-10-22 | 7 |  |  |  |  |  | 78d | 0d |  | ГНИВЦ Команда прикладной системы | 80h |  |
| 9 | 2.7 | Сформировать отчеты по проверкам для ИИ моделей | 7d | 2026-10-02 | 2026-10-12 | 6 |  |  |  |  |  | 90d | 0d |  | ГНИВЦ Команда ИИ | 56h |  |
| 10 | 2.8 | Провести тестирование на ADP ГНИВЦ решения ЦСР ФИАС и моделей LLM | 3d | 2026-10-23 | 2026-10-27 | 8 |  |  |  |  |  | 78d | 0d |  | ГНИВЦ Команда ИИ | 24h |  |
| 11 | 2.9 | Доработки по итогам тестирования | 5d | 2026-10-28 | 2026-11-03 | 10 |  |  |  |  |  | 178d | 0d |  | ГНИВЦ Команда ИИ | 40h |  |
| 12 | 2.10 | Подготовить инструкцию по установке и настройке LLM моделей и решения на сервер с GPU | 5d | 2026-10-28 | 2026-11-03 | 10 |  |  |  |  |  | 78d | 0d |  | ГНИВЦ | 40h |  |
| 13 | 2.11 | Записать LLM решения на диск | 2d | 2026-10-13 | 2026-10-14 | 9 |  |  |  |  |  | 90d | 0d | start no earlier than 2026-08-11 | ГНИВЦ Команда ИИ | 16h |  |
| 14 | 2.12 | Подготовить и отправить письмо "О согласовании установки LLM моделей с диска" в УИБ (копия УИТ/ФКУ) с приложением отчета | 1d | 2026-10-15 | 2026-10-15 | 13 |  |  |  |  |  | 90d | 0d |  | ГНИВЦ | 8h |  |
| 15 | 2.13 | Получить ответ на письмо от УИБ "О согласовании установки LLM моделей с диска" | 3d | 2026-10-16 | 2026-10-20 | 14 |  |  |  |  |  | 90d | 0d |  | УИБ | 24h |  |
| 16 | 2.14 | Передать диск с LLM моделями и решением на проверку ИБ ФКУ с приложением акта приема-передачи | 1d | 2026-10-21 | 2026-10-21 | 15 |  |  |  |  |  | 90d | 0d |  | ГНИВЦ Команда ИИ | 8h |  |
| 17 | 2.15 | Провести проверку диска ИБ ФКУ | 2d | 2026-10-22 | 2026-10-23 | 16 |  |  |  |  |  | 90d | 0d |  | ФКУ | 16h |  |
| 18 | 2.16 | Согласовать инструкцию с ФКУ по заявке в TFS (заявка по МПИД) | 5d | 2026-11-05 | 2026-11-11 | 12 |  |  |  |  |  | 78d | 0d |  | ГНИВЦ, ФКУ; ГНИВЦ УИТИ | 80h |  |
| 19 | 2.17 | Подготовить документы для передачи ППО ЦСР ФИАС в ФАП | 3d | 2026-11-12 | 2026-11-16 | 12, 13, 15, 16, 17, 18 |  |  |  |  |  | 78d | 0d |  | ГНИВЦ | 24h |  |
| 20 | 2.18 | Передать ППО ЦСР ФИАС в ФАП | 2d | 2026-11-17 | 2026-11-18 | 19 |  |  |  |  |  | 78d | 0d |  | ГНИВЦ | 16h |  |
| 21 | 2.19 | Готовность установки ЦСР ФИАС на КОЭ | 1d | 2026-11-19 | 2026-11-19 | 20 |  |  |  |  |  | 78d | 0d |  |  |  |  |
| 22 | 3 | **Разработка и согласование МПИД и установка LLM моделей и ППО ЦСР ФИАС на КОЭ** | 116d | 2026-07-13 | 2026-12-22 |  |  |  |  |  |  | 134d | 0d |  |  | 1176h |  |
| 23 | 3.1 | Перевоз сервера с GPU на Походный с сопутствующими организационными мероприятиями | 21d | 2026-07-13 | 2026-08-10 |  |  |  |  |  |  | 239d | 0d | start no earlier than 2026-07-13 | ГНИВЦ УИТИ | 168h |  |
| 24 | 3.2 | Разработка и согласование L2 | 13d | 2026-07-13 | 2026-07-29 |  |  |  |  |  |  | 134d | 0d | start no earlier than 2026-07-13 | ГНИВЦ УИТИ | 104h |  |
| 25 | 3.3 | Коммутация по L2 | 5d | 2026-07-30 | 2026-08-05 | 24 |  |  |  |  |  | 134d | 0d |  | ФКУ | 40h |  |
| 26 | 3.4 | Инициировать проект в TFS и согласовать его с ФКУ | 5d | 2026-08-06 | 2026-08-12 | 25 |  |  |  |  |  | 134d | 0d | start no earlier than 2026-06-22 | ГНИВЦ, ФКУ; ГНИВЦ УИТИ | 80h |  |
| 27 | 3.5 | Актуализировать требованя к ИТ инфраструктуре и согласовать в РСИС | 5d | 2026-08-06 | 2026-08-12 | 26SS |  |  |  |  |  | 134d | 0d |  | ГНИВЦ УИТИ | 40h |  |
| 28 | 3.6 | Отправить письмо в УИТ для согласования выделения дополнительных серверов | 1d | 2026-08-13 | 2026-08-13 | 27 |  |  |  |  |  | 230d | 0d |  | ГНИВЦ | 8h |  |
| 29 | 3.7 | Получить ответ от ФКУ о подтверждении наличия оборудования | 3d | 2026-08-14 | 2026-08-18 | 28 |  |  |  |  |  | 230d | 0d |  | ФКУ | 24h |  |
| 30 | 3.8 | Получить ответ от УИТ о согласовании выделения оборудования | 3d | 2026-08-19 | 2026-08-21 | 29 |  |  |  |  |  | 230d | 0d |  | УИТ | 24h |  |
| 31 | 3.9 | Подготовить МПИД (пояснительную записку, матрицу сетевого взаимодействия, схему развертывания ЦСР ФИАС (с GPU)) | 5d | 2026-08-13 | 2026-08-19 | 27 |  |  |  |  |  | 134d | 0d |  | ГНИВЦ УИТИ | 40h |  |
| 32 | 3.10 | Согласовать с ФКУ в tfs по заявке (ПЗ, схемы, матрицы сетевого взаимодействия (использование GPU СКУАД), профиль трафика) | 7d | 2026-08-11 | 2026-08-19 | 31FS-7d |  |  |  |  |  | 134d | 0d | finish no earlier than 2026-08-14 | ГНИВЦ, ФКУ; ГНИВЦ УИТИ | 112h |  |
| 33 | 3.11 | Направить письмо в УИТ (УИБ, ФКУ) об утверждении комплекта документации (ПЗ, схемы, матрицы сетевого взаимодействия (использование GPU СКУАД), профиль трафика) | 1d | 2026-08-20 | 2026-08-20 | 32 |  |  |  |  |  | 134d | 0d |  | ГНИВЦ УИТИ | 8h |  |
| 34 | 3.12 | Получить ответ от УИТ об утверждении комплекта документации (ПЗ, схемы, матрицы сетевого взаимодействия (использование GPU СКУАД), профиль трафика) | 3d | 2026-08-21 | 2026-08-25 | 33 |  |  |  |  |  | 134d | 0d |  | УИТ | 24h |  |
| 35 | 3.13 | Сформировать заявку на создание VLAN для ЦСР ФИАС | 1d | 2026-08-20 | 2026-08-20 | 33FF |  |  |  |  |  | 137d | 0d |  | ГНИВЦ | 8h |  |
| 36 | 3.14 | Создать VLAN в rDMZ Москва | 3d | 2026-08-26 | 2026-08-28 | 34, 35, 25 |  |  |  |  |  | 134d | 0d |  | ФКУ | 24h |  |
| 37 | 3.15 | Сформировать заявку на создание СВ для LLM по МПИД | 1d | 2026-08-20 | 2026-08-20 | 33FF |  |  |  |  |  | 140d | 0d |  | ГНИВЦ УИТИ | 8h |  |
| 38 | 3.16 | Создать СВ для LLM по заявке в TFS | 3d | 2026-08-31 | 2026-09-02 | 36, 37 |  |  |  |  |  | 134d | 0d |  | ФКУ | 24h |  |
| 39 | 3.17 | Сформировать заявку на установку (обновление) ЦСР ФИАС | 1d | 2026-11-20 | 2026-11-20 | 21 |  |  |  |  |  | 78d | 0d |  | ГНИВЦ Команда прикладной системы | 8h |  |
| 40 | 3.18 | Установить (обновление) ЦСР ФИАС по заявке TFS | 10d | 2026-11-23 | 2026-12-04 | 39, 38 |  |  |  |  |  | 78d | 0d |  | ФКУ | 80h |  |
| 41 | 3.19 | Установить LLM моделей и решения по инструкции силами ГНИВЦ (в т.ч. Командировка сотрудника ГНИВЦ) (централизовано со СКУАД) | 10d | 2026-11-20 | 2026-12-03 | 17, 21 |  |  |  |  |  | 79d | 0d |  | ГНИВЦ Команда ИИ | 80h |  |
| 42 | 3.20 | Провести тестирование решения с LLM силами ГНИВЦ | 5d | 2026-12-07 | 2026-12-11 | 40, 41 |  |  |  |  |  | 78d | 0d |  | ГНИВЦ Команда ИИ и команда прикладной системы | 40h |  |
| 43 | 3.21 | Корректировки по итогам тестирования | 5d | 2026-12-14 | 2026-12-18 | 42 |  |  |  |  |  | 78d | 0d |  | ГНИВЦ Команда ИИ и команда прикладной системы | 40h |  |
| 44 | 3.22 | Провести демонстрацию заказчику на КОЭ | 1d | 2026-12-21 | 2026-12-21 | 42, 43 |  |  |  |  |  | 78d | 0d |  | ГНИВЦ Команда ИИ и команда прикладной системы | 8h |  |
| 45 | 3.23 | Согласование с УИБ и перенос промышленных данных на КОЭ для реализации КПЭ | 15d | 2026-11-02 | 2026-11-23 |  |  |  |  |  |  | 126d | 0d | start no earlier than 2026-11-02 | ГНИВЦ Команда ИИ и команда прикладной системы | 120h |  |
| 46 | 3.24 | Тестирование на промышленных данных силами ГНИВЦ | 7d | 2026-11-24 | 2026-12-02 | 45 |  |  |  |  |  | 126d | 0d |  | ГНИВЦ Команда ИИ и команда прикладной системы | 56h |  |
| 47 | 3.25 | Провести демонстрацию заказчику на КОЭ с промышленными данными для реализации КПЭ | 1d | 2026-12-22 | 2026-12-22 | 46, 44 |  |  |  |  |  | 113d | 0d |  | ГНИВЦ Команда ИИ и команда прикладной системы | 8h |  |

Notes:
- 7: Есть риски из-за неокончательного выбора OCR решения / Text3: Провайдер еще неизвестен
- 8: Text3: Часть реализации решения с LLM (состояние очереди, чинкование ? - обсудить с Бачуриным - непонятен процесс обработки больших документов, шедуллер) будет поставляться отдельно, надо уточнить у Федорова М.
- 22: Text3: Схема сетевого взаимодействия (схема логической структуры)
- 26: Text3: Уточнить у Дениса (ФКУ), нужно ли будет дублировать письма по доступу к серверу по новому проекту
- 32: Есть необходимость увеличить количество серверов для использования мощностей для 2х проектов: СКУАД и ЕГРЮЛ; вероятно будет использовано арендованный сервер
- 35: Text3: Уточнить у Бачурина необходимые работы и заявки по разворачиванию приклада на выделенных серверах. Ответ: имелось в виду про LLM? у ЦСР ФИАС уже есть VLAN
- 36: Text3: Уточнить у Бачурина и арх. Инфры нужен ли новый vlan для llm решения, или мы используем текущий vlan для ЦСР
- 40: Text3: Уточнить, нужны ли виртуальные машины или сервера (у Бачурина), срок тоже. Ответ: ВМ не нужно разворачивать, все есть.

| ID | WBS | Task | Duration | Start | Finish | Predecessors | Total slack | Free slack | Constraint | Resources | Work |
| --- | --- | --- | --- | --- | --- | --- | --- | --- | --- | --- | --- |
| 48 | 4 | **Подготовительные работы** | 182d? | 2026-07-13 | 2027-04-07 |  | 78d | 0d |  |  | 2168h |
| 49 | 4.1 | Поставка оборудования для КПЭ | 1d | 2026-11-02 | 2026-11-02 |  | 120d | 0d | start no earlier than 2026-11-02 |  |  |
| 50 | 4.2 | Доработать LLM модели и ППО ЦСР ФИАС после проведения демонстрации заказчику на КОЭ | 10d | 2026-12-22 | 2027-01-13 | 44 | 78d | 0d |  | ГНИВЦ Команда ИИ | 80h |
| 51 | 4.3 | Доработать инструкции по развертыванию LLM моделей и документации ППО ЦСР ФИАС | 5d | 2026-12-22 | 2026-12-28 | 44 | 135d | 0d |  | ГНИВЦ Команда ИИ | 40h |
| 52 | 4.4 | Согласование проноса диска с LLM моделями на КПЭ | 24d | 2026-07-13 | 2026-08-13 |  | 186d | 0d | start no earlier than 2026-07-13 | УИБ; ФКУ; ГНИВЦ | 576h |
| 53 | 4.5 | Согласовать инструкции по развертыванию LLM моделей с ФКУ | 5d | 2026-12-29 | 2027-01-13 | 51 | 135d | 0d |  | ГНИВЦ, ФКУ; ГНИВЦ Команда ИИ | 80h |
| 54 | 4.6 | Сформировать отчеты по проверкам для ИИ моделей | 5d | 2027-01-14 | 2027-01-20 | 41, 50 | 78d | 0d | start no earlier than 2026-11-09 | ГНИВЦ Команда ИИ | 40h |
| 55 | 4.7 | Записать LLM модели на диск | 2d | 2027-01-21 | 2027-01-22 | 54 | 78d | 0d |  | ГНИВЦ Команда ИИ | 16h |
| 56 | 4.8 | Подготовить и отправить письмо "О согласовании установки LLM моделей с диска" в УИБ (копия УИТ/ФКУ) с приложением отчета | 1d | 2027-01-25 | 2027-01-25 | 52, 55 | 78d | 0d |  | ГНИВЦ | 8h |
| 57 | 4.9 | Получить ответ на письмо от УИБ "О согласовании установки LLM моделей с диска" | 3d | 2027-01-26 | 2027-01-28 | 56 | 78d | 0d |  | ГНИВЦ, УИБ | 24h |
| 58 | 4.10 | Передать диск с LLM моделями на проверку ИБ ФКУ с приложением акта приема-передачи | 1d | 2027-01-29 | 2027-01-29 | 57 | 78d | 0d |  | ГНИВЦ Команда ИИ | 8h |
| 59 | 4.11 | Провести проверку диска ИБ ФКУ | 2d | 2027-02-01 | 2027-02-02 | 58, 52 | 78d | 0d |  | ФКУ | 16h |
| 60 | 4.12 | Принять решение о способе доступа к диску для настройки LLM моделей | 10d | 2026-12-22 | 2027-01-13 | 50SS, 49 | 86d | 0d |  | ГНИВЦ Команда ИИ | 80h |
| 61 | 4.13 | Отправить письмо о согласовании трансфера | 1d | 2027-01-14 | 2027-01-14 | 60, 49 | 86d | 0d |  | ГНИВЦ УИТИ | 8h |
| 62 | 4.14 | Трансфер GPU-сервера из Городца в Дубну | 10d | 2027-01-15 | 2027-01-28 | 61, 49 | 86d | 0d |  | ГНИВЦ УИТИ | 80h |
| 63 | 4.15 | Подготовить документы для передачи ППО ЦСР ФИАС в ФАП | 3d | 2027-02-03 | 2027-02-05 | 59 | 78d | 0d |  | ГНИВЦ Команда прикладной системы | 24h |
| 64 | 4.16 | Передать ППО ЦСР ФИАС в ФАП | 2d | 2027-02-08 | 2027-02-09 | 63 | 78d | 0d |  | ГНИВЦ Команда прикладной системы | 16h |
| 65 | 4.17 | Сервера GPU поставлены на КПЭ | 1d | 2027-02-10 | 2027-02-10 | 64, 60, 62 | 78d | 0d |  |  |  |
| 66 | 4.18 | Сформировать схему L2 | 8d | 2026-08-13 | 2026-08-24 | 31SS | 176d | 0d |  | ГНИВЦ УИТИ | 64h |
| 67 | 4.19 | Согласовать схему L2 в рабочем порядке с ФКУ в Lotus | 5d | 2026-08-25 | 2026-08-31 | 66 | 224d | 0d |  | ФКУ | 40h |
| 68 | 4.20 | Сформировать требования к серверу и разместить в РСИС на согласование на сервер с GPU | 5d | 2026-08-25 | 2026-08-31 | 66 | 176d | 0d |  | ГНИВЦ УИТИ | 40h |
| 69 | 4.21 | Согласовать требования к серверу GPU в РСИС | 5d | 2026-09-01 | 2026-09-07 | 68 | 176d | 0d |  | ФКУ | 40h |
| 70 | 4.22 | Направить в УИТ (копия УИБ, ФКУ) о согласовании схемы L2+ требование в РСИС | 1d | 2026-09-08 | 2026-09-08 | 69 | 176d | 0d |  | ГНИВЦ УИТИ | 8h |
| 71 | 4.23 | Получить ответ от УИТ о согласовании коммутации серверов + выделения серверов по требованию в РСИС | 5d | 2026-09-09 | 2026-09-15 | 70 | 176d | 0d |  | ГНИВЦ УИТИ | 40h |
| 72 | 4.24 | Провести выделение и коммутацию серверов | 10d | 2027-02-11 | 2027-02-26 | 71, 65 | 78d | 0d |  | ФКУ | 80h |

Notes:
- 55: Text3: Уточнить вопрос с проносом диска на пром. Также уточнить, в случае согласования проноса, куда и как его будут передавать (на уровне руководства)
- 59: Риск согласования проноса, если нам не согласуют строчку 52 не понятно, как поедем на КПЭ. Единственная тема с загрузкой это ФАБ, а ФАБ не тянет такое количество ТБ. При такой нагрузке встанет вся плановая загрузка
- 60: Text3: Либо физический перевоз, либо монтирование на КОЭ и создание СВ - уточнить у Федорова
- 61: Text3: Запросить примеры у Ани
- 62: Text3: По информации от Федорова М. - все 22 сервера едут в Дубну
- 65: Text3: Размещение серверов (площадка) на уточнении. Ответ: уточнили, Дубна (ФИАС), ЦСР (Городец, Дубна)
- 66: Text3: Параллель с подготовкой МПИД КОЭ (задача 31)

| ID | WBS | Task | Duration | Start | Finish | Predecessors | Total slack | Free slack | Constraint | Resources | Work |
| --- | --- | --- | --- | --- | --- | --- | --- | --- | --- | --- | --- |
| 73 | 4.25 | **Разработка и согласование МПИД и установка LLM моделей и ППО ЦСР ФИАС на КПЭ** | 146d? | 2026-09-01 | 2027-04-07 |  | 78d | 0d |  |  | 760h |
| 74 | 4.25.1 | Инициировать проект в TFS и согласование с ФКУ | 5d | 2027-02-11 | 2027-02-17 | 49, 65 | 110d | 0d | start no earlier than 2026-06-22 | ГНИВЦ, ФКУ; ГНИВЦ УИТИ | 80h |
| 75 | 4.25.2 | Подготовить МПИД (пояснительная записка, матрица сетевого взаимодействия, схема развертывания ЦСР ФИАС (с GPU), L3) | 10d | 2026-09-01 | 2026-09-14 | 68 | 185d | 0d |  | ГНИВЦ УИТИ | 80h |
| 76 | 4.25.3 | Согласование с ФКУ в tfs по заявке ПЗ, схемы, матрицы сетевого взаимодействия (использование GPU СКУАД), профиль трафика, L3) | 5d | 2026-09-04 | 2026-09-10 | 75FS-7d | 185d | 0d |  | ГНИВЦ, ФКУ; ГНИВЦ УИТИ | 80h |
| 77 | 4.25.4 | Направить письмо в УИТ (УИБ, ФКУ) об утверждении комплекта документации (ПЗ, схемы, матрицы сетевого взаимодействия (использование GPU СКУАД), профиль трафика, L3) | 1d | 2026-09-11 | 2026-09-11 | 76 | 185d | 0d |  | ГНИВЦ УИТИ | 8h |
| 78 | 4.25.5 | Получить ответное письмо УИТ об утверждении комплекта документации (ПЗ, схемы, матрицы сетевого взаимодействия (использование GPU СКУАД), профиль трафика, L3) | 3d | 2026-09-14 | 2026-09-16 | 77 | 185d | 0d |  | УИТ | 24h |
| 79 | 4.25.6 | Сформировать заявку на создание VLAN для ЦСР ФИАС / сервера с GPU | 1d | 2027-02-11 | 2027-02-11 | 77FF, 65 | 87d | 0d |  | ГНИВЦ | 8h |
| 80 | 4.25.7 | Создать VLAN в rDMZ Дубна | 5d | 2027-03-01 | 2027-03-05 | 78, 79, 72 | 78d | 0d |  | ФКУ | 40h |
| 81 | 4.25.8 | Сформировать заявку на создание СВ по МПИД | 1d | 2026-09-11 | 2026-09-11 | 77FF | 193d | 0d |  | ГНИВЦ УИТИ | 8h |
| 82 | 4.25.9 | Создать СВ по заявке в TFS | 5d | 2027-03-09 | 2027-03-15 | 80, 81 | 78d | 0d |  | ФКУ | 40h |
| 83 | 4.25.10 | Сформировать заявку на установку ЦСР ФИАС | 1d | 2027-03-16 | 2027-03-16 | 82 | 78d | 0d | start no earlier than 2026-11-30 | ГНИВЦ Команда прикладной системы | 8h |
| 84 | 4.25.11 | Установить ЦСР ФИАС по заявке TFS | 5d | 2027-03-17 | 2027-03-23 | 82, 83 | 78d | 0d |  | ФКУ | 40h |
| 85 | 4.25.12 | Установить LLM моделей по инструкции | 5d | 2026-12-10 | 2026-12-16 | 81 | 137d | 0d | start no earlier than 2026-12-10 | ФКУ | 40h |
| 86 | 4.25.13 | Провести тестирование силами ГНИВЦ/ФКУ | 5d | 2027-03-24 | 2027-03-30 | 84, 85 | 78d | 0d |  | ГНИВЦ Команда ИИ и команда прикладной системы | 40h |
| 87 | 4.25.14 | Корректировки по итогам тестирования | 5d | 2027-03-31 | 2027-04-06 | 86 | 78d | 0d |  |  |  |
| 88 | 4.25.15 | Провести демонстрацию заказчику на КПЭ (Целевое решение) | 1d | 2027-04-07 | 2027-04-07 | 87, 65 | 78d | 0d |  | ГНИВЦ Команда ИИ и команда прикладной системы | 8h |
| 89 | 4.25.16 | Параллельные работы КОЭ-КПЭ | 1d? | 2026-12-23 | 2026-12-23 | 47 | 113d | 0d |  |  |  |
| 90 | 4.25.17 | Принять решение о продолжительности предоставления временного СВ | 2d | 2026-12-24 | 2026-12-25 | 89 | 113d | 0d |  | ФКУ; ГНИВЦ | 32h |
| 91 | 4.25.18 | Составление заявки на настройку временного сетевого взаимодействия для серверов ЦСР/ФИАС (КПЭ) + LLM решение на КОЭ | 1d? | 2026-12-28 | 2026-12-28 | 90 | 113d | 0d |  |  |  |
| 92 | 4.25.19 | Направление и рассмотрение заявки на настройку временного сетевого взаимодействия для серверов ЦСР/ФИАС (КПЭ) + LLM решение на КОЭ | 1d | 2026-12-29 | 2026-12-29 | 91 | 113d | 0d |  | ФКУ; ГНИВЦ | 16h |
| 93 | 4.25.20 | Создать СВ по заявке | 5d | 2026-12-30 | 2027-01-14 | 92 | 113d | 0d |  | ФКУ | 40h |
| 94 | 4.25.21 | Провести тестирование решения с LLM на КОЭ и ЦСР/ФИАС (КПЭ) силами ГНИВЦ | 10d | 2027-01-15 | 2027-01-28 | 93 | 113d | 0d |  | ГНИВЦ Команда ИИ и команда прикладной системы | 80h |
| 95 | 4.25.22 | Корректировки по итогам тестирования | 10d | 2027-01-29 | 2027-02-11 | 94 | 113d | 0d |  | ГНИВЦ Команда ИИ и команда прикладной системы | 80h |
| 96 | 4.25.23 | Провести демонстрацию заказчику на КПЭ (временного решения) | 1d | 2027-02-12 | 2027-02-12 | 95 | 113d | 0d |  | ГНИВЦ Команда ИИ и команда прикладной системы | 8h |

Notes:
- 73: Text3: Уточнить у Бачурина комплект документов - МПИД, РА, схемы L2, L3 - нужно ли что-то еще? Ответ: у Миши информации нет, нужно уточнить у инфраструктурщиков
- 79: Text3: Уточнить у Бачурина необходимые работы и заявки по разворачиванию приклада на выделенных серверах. Ответ: ЦСР ФИАС все есть, нужно для LLM части. Уточнить у Бачурина и арх. Инфры нужен ли новый vlan для llm решения, или мы используем текущий vlan для ЦСР
- 84: Text3: Уточнить, нужны ли виртуальные машины или сервера (у Бачурина), срок тоже. Ответ: для ЦСР ФИАС ВМ не нужны (все есть), для LLM - нужны. Уточнить у Кирилла Д. нужны ли ВМ для LLM - Ответ: ВМ - нет, сервера нужны для сервиса приоритизации
- 85: Text3: 2 машины под Кубер, 2 - Kafka, 2 - PG (Postgress)
- 90: Text3: ЛИбо соглсуют на 1 месяц и нужно будет ежемесячно продлевать, либо согласуют сразу на весь нужный период
- 92: Text3: Пример заявки: https://erp.gnivc.ru/tfs/DefaultCollection/%D0%90%D0%98%D0%A1%20%D0%9D%D0%B0%D0%BB%D0%BE%D0%B3-3/_workitems/edit/4987879
